Schedule from MS Project, 2018-09-19 to 2018-12-13, costs in ¥.
Microsoft

## Calendars

- 标准: Mon-Fri 08:00-12:00, 13:00-17:00; Sat-Sun 08:00-21:00. Exceptions (off unless hours are given): 2018-10-01 to 2018-10-07 (国庆假期).

## Resources

| Resource | Rate |
| --- | --- |
| 蔡峰 | 28 |
| 黄为波 | 28 |
| 江亮儒 | 28 |
| 苏雨豪 | 28 |
| 陈子卿 | 28 |
| 小组全体成员 |  |

## Schedule

| ID | WBS | Task | Type | Duration | Start | Finish | Predecessors | Baseline start | Baseline finish | Baseline duration | Total slack | Free slack | Constraint | Resources | Work | Cost |
| --- | --- | --- | --- | --- | --- | --- | --- | --- | --- | --- | --- | --- | --- | --- | --- | --- |
| 1 | 1 | **需求工程项目准备** |  | 51.5d | 2018-09-19 09:00 | 2018-11-08 18:00 |  | 2018-09-19 09:00 | 2018-11-08 18:00 | 59.75d |  |  |  |  | 53h | 952 |
| 2 | 1.1 | 确定分组成员 | manual | 1h | 2018-09-19 09:00 | 2018-09-19 10:00 |  | 2018-09-19 09:00 | 2018-09-19 10:00 | 1h |  |  |  | 小组全体成员 | 1h |  |
| 3 | 1.2 | 课题选定 | manual | 2d | 2018-09-19 10:00 | 2018-09-21 10:00 | 2 | 2018-09-19 09:00 | 2018-09-20 18:00 | 2d |  |  |  | 小组全体成员 | 2h |  |
| 4 | 1.3 | 统一开发工具 |  | 1d | 2018-09-19 10:00 | 2018-09-20 10:00 | 2 | 2018-09-19 09:00 | 2018-09-20 09:00 | 1d | 99.75d |  |  | 小组全体成员 | 8h |  |
| 5 | 1.4 | 确定小组成员职责 | manual | 1d | 2018-09-19 10:00 | 2018-09-20 10:00 | 2 | 2018-09-26 09:00 | 2018-09-27 09:00 | 1d |  |  |  | 小组全体成员 | 8h |  |
| 6 | 1.5 | **需求工程项目计划** |  | 34d | 2018-09-26 09:00 | 2018-10-31 18:00 |  | 2018-09-26 09:00 | 2018-11-07 18:00 | 50.5d |  |  |  |  | 34h | 952 |
| 7 | 1.5.1 | 采用需求工程项目计划模板 | manual | 0.1h | 2018-09-28 09:00 | 2018-09-28 09:06 |  |  |  |  |  |  |  | 黄为波 | 0.1h | 2.8 |
| 8 | 1.5.2 | 人力资源管理计划 | manual | 3h | 2018-09-29 09:00 | 2018-09-29 12:00 | 7 | 2018-09-28 09:00 | 2018-09-28 12:00 | 3h |  |  |  | 蔡峰 | 3h | 84 |
| 9 | 1.5.3 | 成本管理计划 | manual | 2h | 2018-09-29 09:00 | 2018-09-29 11:00 | 7 | 2018-09-28 09:00 | 2018-09-28 12:00 | 3h |  |  |  | 陈子卿 | 2h | 56 |
| 10 | 1.5.4 | 沟通管理计划 | manual | 3h | 2018-09-29 09:00 | 2018-09-29 12:00 | 7 | 2018-09-28 09:00 | 2018-09-28 12:00 | 3h |  |  |  | 苏雨豪 | 3h | 84 |
| 11 | 1.5.5 | 风险管理计划 | manual | 3h | 2018-09-29 09:00 | 2018-09-29 12:00 | 7 | 2018-09-28 09:00 | 2018-09-28 12:00 | 3h |  |  |  | 陈子卿 | 3h | 84 |
| 12 | 1.5.6 | 需求工程项目计划甘特图与wbs | manual | 2h | 2018-09-29 09:00 | 2018-09-29 11:00 |  |  |  |  |  |  |  | 黄为波 | 2h | 56 |
| 14 | 1.5.7 | 可行性分析报告起草 |  | 3h | 2018-09-30 15:00 | 2018-09-30 18:00 |  | 2018-09-27 09:00 | 2018-09-27 15:00 | 5h | 78.5d | 5.5d | finish no earlier than 2018-09-30 18:00 | 江亮儒 | 3h | 84 |
| 15 | 1.5.8 | 整合并检查需求工程项目计划 | manual | 1h | 2018-09-30 09:00 | 2018-09-30 10:00 | 7, 8, 9, 10, 11 |  |  |  |  |  |  | 黄为波 | 0.3h | 8.4 |
| 16 | 1.5.9 | 需求工程项目计划PPT起草 | manual | 2h | 2018-09-30 09:00 | 2018-09-30 11:00 | 7, 8, 9, 10, 11 |  |  |  |  |  |  | 苏雨豪 | 2h | 56 |
| 17 | 1.5.10 | 需求计划的项目概述错误信息修改 | manual | 1h | 2018-10-13 09:00 | 2018-10-13 10:00 | 15 |  |  |  |  |  |  | 黄为波 | 1h | 28 |
| 18 | 1.5.11 | 增加并细化了技术可行性分析的有关内容 | manual | 1h | 2018-10-13 09:00 | 2018-10-13 10:00 | 14 |  |  |  |  |  |  | 黄为波 | 1h | 28 |
| 19 | 1.5.12 | 修改人力资源管理部分 | manual | 1h | 2018-10-14 09:00 | 2018-10-14 10:00 | 15, 8 |  |  |  |  |  |  | 蔡峰 | 1h | 28 |
| 20 | 1.5.13 | 修改wbs项目收尾部分 | manual | 0.5h | 2018-10-18 09:00 | 2018-10-18 09:30 | 12 |  |  |  |  |  |  | 黄为波 | 0.5h | 14 |
| 21 | 1.5.14 | 需求工程项目计划修改(更新培训日期，删除了不必要的内容) | manual | 1.5h | 2018-10-20 09:00 | 2018-10-20 10:30 | 17 |  |  |  |  |  |  | 蔡峰; 陈子卿 | 2h | 56 |
| 22 | 1.5.15 | 修改需求工程项目计划目录 | manual | 0.1h | 2018-10-21 09:00 | 2018-10-21 09:06 | 21 |  |  |  |  |  |  | 陈子卿 | 0.1h | 2.8 |
| 23 | 1.5.16 | 质量保证计划编写 | manual | 2h | 2018-10-27 09:00 | 2018-10-27 11:00 | 21 |  |  |  |  |  |  | 江亮儒; 苏雨豪 | 4h | 112 |
| 24 | 1.5.17 | 在需求工程项目计划增加范围、时间、质量管理计划 | manual | 2h | 2018-10-27 09:00 | 2018-10-27 11:00 | 22 |  |  |  |  |  |  | 黄为波 | 2h | 56 |
| 25 | 1.5.18 | 根据预评审对“人员配置管理计划”以及“干系人手册”进行修改 | manual | 1h | 2018-10-27 09:00 | 2018-10-27 10:00 | 24 |  |  |  |  |  |  | 蔡峰 | 1h | 28 |
| 26 | 1.5.19 | 风险管理计划修改，新增采购计划 | manual | 1h | 2018-10-27 09:00 | 2018-10-27 10:00 | 25 |  |  |  |  |  |  | 陈子卿 | 1h | 28 |
| 27 | 1.5.20 | 修改需求工程项目计划答辩PPT | manual | 1h | 2018-10-28 09:00 | 2018-10-28 10:00 | 26 |  |  |  |  |  |  | 蔡峰; 陈子卿 | 2h | 56 |
| 28 | 1.5.21 | 需求工程项目计划评审 | milestone, manual | 0d | 2018-10-31 09:00 | 2018-10-31 09:00 |  |  |  |  |  |  |  |  |  |  |
| 29 | 1.5.22 | <新任务> | manual | 1d? | 2018-09-26 09:00 | 2018-09-27 09:00 |  |  |  |  |  |  |  |  |  |  |

| ID | WBS | Task | Type | Duration | Start | Finish | Predecessors | Baseline start | Baseline finish | Baseline duration | Total slack | Resources |
| --- | --- | --- | --- | --- | --- | --- | --- | --- | --- | --- | --- | --- |
| 30 | 2 | **需求开发阶段** |  | 44.38d | 2018-11-01 09:00 | 2018-12-08 18:00 |  | 2018-11-01 09:00 | 2018-12-08 18:00 | 44.38d |  |  |
| 31 | 2.1 | **需求获取** |  | 12d | 2018-11-08 08:00 | 2018-11-18 09:00 |  | 2018-11-05 09:00 | 2018-11-14 15:00 | 10.88d | 0d |  |
| 32 | 2.1.1 | 用户群分类 | milestone, manual | 0h | 2018-11-08 08:00 | 2018-11-08 08:00 | 6 | 2018-11-08 09:00 | 2018-11-08 11:00 | 2h |  | 蔡峰 |
| 33 | 2.1.2 | 定义愿景和范围 | milestone, manual | 0h | 2018-11-08 08:00 | 2018-11-08 08:00 | 6 | 2018-11-08 09:00 | 2018-11-08 12:00 | 3h |  | 黄为波; 陈子卿 |
| 34 | 2.1.3 | 初步制定功能点列表 | milestone, manual | 0h | 2018-11-08 08:00 | 2018-11-08 08:00 | 6 | 2018-11-08 09:00 | 2018-11-08 12:00 | 3h |  | 江亮儒; 苏雨豪 |
| 35 | 2.1.4 | 选择产品代表 | milestone, manual | 0h | 2018-11-08 11:00 | 2018-11-08 11:00 | 6, 34 | 2018-11-08 09:00 | 2018-11-08 10:00 | 1h |  | 蔡峰; 陈子卿; 黄为波; 江亮儒; 苏雨豪 |
| 36 | 2.1.5 | 建立核心队伍 | milestone, manual | 0h | 2018-11-08 11:00 | 2018-11-08 11:00 | 32, 34 | 2018-11-08 09:00 | 2018-11-08 10:00 | 1h |  | 蔡峰; 陈子卿; 黄为波; 江亮儒; 苏雨豪 |
| 37 | 2.1.6 | 项目下达者的访谈 | milestone, manual | 0h | 2018-11-10 09:00 | 2018-11-10 09:00 | 34, 44, 36 | 2018-11-14 09:00 | 2018-11-14 10:00 | 1h |  | 蔡峰; 陈子卿; 黄为波; 江亮儒; 苏雨豪 |
| 38 | 2.1.7 | 绘制关联图 | milestone, manual | 0h | 2018-11-10 10:00 | 2018-11-10 10:00 | 37 | 2018-11-12 09:00 | 2018-11-12 11:00 | 2h |  | 蔡峰 |
| 39 | 2.1.8 | 画用例图 | milestone, manual | 0h | 2018-11-10 10:00 | 2018-11-10 10:00 | 37 | 2018-11-09 09:00 | 2018-11-10 09:00 | 1d |  | 江亮儒 |
| 40 | 2.1.9 | 教师需求第一次访谈 | milestone, manual | 0h | 2018-11-10 18:00 | 2018-11-10 18:00 | 38, 39 | 2018-11-06 09:00 | 2018-11-06 10:00 | 1h |  | 陈子卿 |
| 41 | 2.1.10 | 学生需求第一次访谈 | milestone, manual | 0h | 2018-11-10 18:00 | 2018-11-10 18:00 | 38, 39 | 2018-11-06 09:00 | 2018-11-06 10:00 | 1h |  | 苏雨豪 |
| 42 | 2.1.11 | 游客需求第一次访谈 | milestone, manual | 0h | 2018-11-10 18:00 | 2018-11-10 18:00 | 38, 39 | 2018-11-06 09:00 | 2018-11-06 10:00 | 1h |  | 蔡峰 |
| 43 | 2.1.12 | 更新用例图 | milestone, manual | 0h | 2018-11-13 08:00 | 2018-11-13 08:00 | 38, 39, 40, 41, 42 | 2018-11-12 09:00 | 2018-11-12 14:00 | 4h |  | 苏雨豪 |
| 44 | 2.1.13 | 制作界面原型 | milestone, manual | 0h | 2018-11-15 09:00 | 2018-11-15 09:00 |  | 2018-11-09 09:00 | 2018-11-10 09:00 | 1d |  | 陈子卿 |
| 45 | 2.1.14 | 教师需求第二次访谈 | milestone, manual | 0h | 2018-11-16 09:00 | 2018-11-16 09:00 | 40 | 2018-11-12 09:00 | 2018-11-12 10:00 | 1h |  | 黄为波 |
| 46 | 2.1.15 | 学生需求第二次访谈 | milestone, manual | 0h | 2018-11-16 09:00 | 2018-11-16 09:00 | 41 | 2018-11-12 09:00 | 2018-11-12 10:00 | 1h |  | 江亮儒 |
| 47 | 2.1.16 | 游客需求第二次访谈 | milestone, manual | 0h | 2018-11-16 09:00 | 2018-11-16 09:00 | 42 | 2018-11-12 09:00 | 2018-11-12 10:00 | 1h |  | 苏雨豪 |
| 48 | 2.1.17 | 更新界面原型 | milestone, manual | 0h | 2018-11-18 09:00 | 2018-11-18 09:00 | 44 | 2018-11-14 09:00 | 2018-11-14 15:00 | 5h |  | 陈子卿; 黄为波 |
| 49 | 2.1.18 | <新任务> | manual | 1d? | 2018-11-08 08:00 | 2018-11-08 17:00 |  | 2018-11-05 09:00 | 2018-11-06 09:00 | 1d? |  |  |
| 50 | 2.1.19 | <新任务> | manual | 1d? | 2018-11-08 08:00 | 2018-11-08 17:00 |  | 2018-11-05 09:00 | 2018-11-06 09:00 | 1d? |  |  |
| 51 | 2.1.20 | <新任务> | manual | 1d? | 2018-11-08 08:00 | 2018-11-08 17:00 |  | 2018-11-05 09:00 | 2018-11-06 09:00 | 1d? |  |  |
| 52 | 2.2 | **需求分析** |  | 7.25d | 2018-11-15 09:00 | 2018-11-21 09:00 |  | 2018-11-15 09:00 | 2018-11-21 10:30 | 7.44d | 0d |  |
| 53 | 2.2.1 | 创建开发原型 | milestone, manual | 0h | 2018-11-15 09:00 | 2018-11-15 09:00 |  | 2018-11-15 09:00 | 2018-11-15 12:00 | 3h |  | 江亮儒 |
| 54 | 2.2.2 | 分析获取需求的可行性 | milestone, manual | 0h | 2018-11-16 09:00 | 2018-11-16 09:00 |  | 2018-11-16 09:00 | 2018-11-16 12:00 | 3h |  | 陈子卿; 黄为波 |
| 55 | 2.2.3 | 确定需求的优先级 | milestone, manual | 0h | 2018-11-16 09:00 | 2018-11-16 09:00 |  | 2018-11-16 09:00 | 2018-11-16 11:00 | 2h |  | 蔡峰 |
| 56 | 2.2.4 | 需求建模 | milestone, manual | 0h | 2018-11-16 09:00 | 2018-11-16 09:00 |  | 2018-11-16 09:00 | 2018-11-16 12:00 | 3h |  | 苏雨豪 |
| 57 | 2.2.5 | 编写数据字典 | milestone, manual | 0h | 2018-11-19 09:00 | 2018-11-19 09:00 |  | 2018-11-19 09:00 | 2018-11-20 11:00 | 10h |  | 蔡峰; 陈子卿; 黄为波; 江亮儒; 苏雨豪 |
| 58 | 2.2.6 | 第8次会议 | milestone, manual | 0h | 2018-11-21 09:00 | 2018-11-21 09:00 |  | 2018-11-21 09:00 | 2018-11-21 10:30 | 1.5h |  | 蔡峰; 陈子卿; 黄为波; 江亮儒; 苏雨豪 |

| ID | WBS | Task | Type | Duration | Start | Finish | Predecessors | Baseline start | Baseline finish | Baseline duration | Total slack | Resources | Work | Cost |
| --- | --- | --- | --- | --- | --- | --- | --- | --- | --- | --- | --- | --- | --- | --- |
| 59 | 2.3 | **需求规范规格** |  | 9.25d | 2018-11-21 09:00 | 2018-11-28 18:00 |  | 2018-11-21 09:00 | 2018-11-28 18:00 | 9.25d |  |  |  |  |
| 60 | 2.3.1 | 使用需求规格说明书的模版 | milestone, manual | 0h | 2018-11-22 09:00 | 2018-11-22 09:00 |  | 2018-11-22 09:00 | 2018-11-22 10:00 | 1h |  | 蔡峰 |  |  |
| 61 | 2.3.2 | 确认需求来源 | milestone, manual | 0h | 2018-11-22 09:00 | 2018-11-22 09:00 |  | 2018-11-22 09:00 | 2018-11-22 11:00 | 2h |  | 陈子卿 |  |  |
| 62 | 2.3.3 | 确定每个需求的唯一标识 | milestone, manual | 0h | 2018-11-23 09:00 | 2018-11-23 09:00 |  | 2018-11-23 09:00 | 2018-11-23 14:00 | 4h |  | 黄为波 |  |  |
| 63 | 2.3.4 | 记录非功能需求 | milestone, manual | 0h | 2018-11-23 09:00 | 2018-11-23 09:00 |  | 2018-11-23 09:00 | 2018-11-23 11:00 | 2h |  | 江亮儒; 苏雨豪 |  |  |
| 64 | 2.3.5 | 编写需求规格说明书 | milestone, manual | 0h | 2018-11-26 09:00 | 2018-11-26 09:00 |  | 2018-11-26 09:00 | 2018-11-28 09:00 | 2d |  | 蔡峰; 陈子卿; 黄为波; 江亮儒; 苏雨豪 |  |  |
| 65 | 2.4 | **需求规格审核** |  | 7.25d | 2018-11-28 09:00 | 2018-12-03 18:00 |  | 2018-11-28 09:00 | 2018-12-03 18:00 | 7.25d |  |  |  |  |
| 66 | 2.4.1 | 需求评审 | milestone, manual | 0h | 2018-11-29 09:00 | 2018-11-29 09:00 |  | 2018-11-29 09:00 | 2018-11-30 09:00 | 8h |  | 陈子卿; 黄为波; 江亮儒 |  |  |
| 67 | 2.4.2 | 确定合格标准 | milestone, manual | 0h | 2018-11-29 09:00 | 2018-11-29 09:00 |  | 2018-11-29 09:00 | 2018-11-29 14:00 | 4h |  | 蔡峰; 苏雨豪 |  |  |
| 68 | 2.4.3 | 编写用户手册 | milestone, manual | 0h | 2018-11-30 09:00 | 2018-11-30 09:00 |  | 2018-11-30 09:00 | 2018-11-30 16:00 | 6h |  | 蔡峰; 陈子卿 |  |  |
| 69 | 2.4.4 | 进行需求测试 | milestone, manual | 0h | 2018-12-03 09:00 | 2018-12-03 09:00 |  | 2018-12-03 09:00 | 2018-12-03 14:00 | 4h |  | 黄为波; 江亮儒; 苏雨豪 |  |  |
| 70 | 2.4.5 | <新任务> | manual | 1d? | 2018-11-28 09:00 | 2018-11-29 09:00 |  | 2018-11-28 09:00 | 2018-11-29 09:00 | 1d? |  |  |  |  |
| 71 | 2.4.6 | <新任务> | manual | 1d | 2018-11-28 09:00 | 2018-11-29 09:00 |  | 2018-11-28 09:00 | 2018-11-29 09:00 | 1d |  |  |  |  |
| 72 | 3 | **需求管理阶段** |  | 10.25d | 2018-12-05 09:00 | 2018-12-13 18:00 |  | 2018-12-05 09:00 | 2018-12-13 18:00 | 10.25d |  |  |  |  |
| 73 | 3.1 | 建立需求变更控制过程 | milestone, manual | 0d | 2018-12-05 09:00 | 2018-12-05 09:00 |  | 2018-12-05 09:00 | 2018-12-06 09:00 | 1d |  | 蔡峰 |  |  |
| 74 | 3.2 | 对需求变更影响分析 | milestone, manual | 0d | 2018-12-05 09:00 | 2018-12-05 09:00 |  | 2018-12-05 09:00 | 2018-12-06 09:00 | 1d |  | 黄为波 |  |  |
| 75 | 3.3 | 建立基线并控制需求集合版本 | milestone, manual | 0d | 2018-12-05 09:00 | 2018-12-05 09:00 |  | 2018-12-05 09:00 | 2018-12-06 09:00 | 1d |  | 江亮儒 |  |  |
| 76 | 3.4 | 记录需求变更的历史 | milestone, manual | 0h | 2018-12-06 09:00 | 2018-12-06 09:00 |  | 2018-12-06 09:00 | 2018-12-06 14:00 | 4h |  | 蔡峰 |  |  |
| 77 | 3.5 | 衡量需求的稳定性 | milestone, manual | 0d | 2018-12-07 09:00 | 2018-12-07 09:00 |  | 2018-12-07 09:00 | 2018-12-08 09:00 | 1d |  | 黄为波 |  |  |
| 78 | 3.6 | 重新编写测试用例 | milestone, manual | 0d | 2018-12-07 09:00 | 2018-12-07 09:00 |  | 2018-12-07 09:00 | 2018-12-08 09:00 | 1d |  | 江亮儒 |  |  |
| 79 | 3.7 | 完善界面原型 | milestone, manual | 0d | 2018-12-10 09:00 | 2018-12-10 09:00 |  | 2018-12-10 09:00 | 2018-12-12 09:00 | 2d |  | 陈子卿; 黄为波 |  |  |
| 80 | 3.8 | 完善用户手册 | milestone, manual | 0d | 2018-12-10 09:00 | 2018-12-10 09:00 |  | 2018-12-10 09:00 | 2018-12-12 09:00 | 2d |  | 蔡峰; 江亮儒 |  |  |
| 81 | 3.9 | 验证变更 | milestone, manual | 0d | 2018-12-10 09:00 | 2018-12-10 09:00 |  | 2018-12-10 09:00 | 2018-12-12 09:00 | 2d |  | 苏雨豪 |  |  |
| 82 | 4 | **培训与翻转课堂** |  | 31d | 2018-09-28 09:00 | 2018-10-31 09:00 |  |  |  |  | 0d |  | 24h | 504 |
| 83 | 4.1 | 负责讲解project的使用 | manual | 2h | 2018-09-28 09:00 | 2018-09-28 11:00 |  |  |  |  |  | 小组全体成员; 黄为波 | 3h | 28 |
| 84 | 4.2 | 负责讲解word文档规范排版 | manual | 1h | 2018-09-29 09:00 | 2018-09-29 10:00 |  |  |  |  |  | 黄为波; 小组全体成员 | 2h | 28 |
| 85 | 4.3 | uml概述的学习以及PPT制作 | manual | 1h | 2018-10-13 09:00 | 2018-10-13 10:00 |  |  |  |  |  | 小组全体成员 | 1h |  |
| 86 | 4.4 | 1.7UML2.0新特性+目录 | manual | 2h | 2018-10-14 09:00 | 2018-10-14 11:00 | 85 |  |  |  |  | 苏雨豪 | 2h | 56 |
| 87 | 4.5 | 完成1.1-1.4UML的结构制作 | manual | 2h | 2018-10-14 09:00 | 2018-10-14 11:00 | 85 |  |  |  |  | 陈子卿 | 2h | 56 |
| 88 | 4.6 | UML图PPT的初步编写 | manual | 2h | 2018-10-14 09:00 | 2018-10-14 11:00 | 85 |  |  |  |  | 江亮儒 | 2h | 56 |
| 89 | 4.7 | 完成UML视图及系统开发阶段部分 | manual | 2h | 2018-10-14 09:00 | 2018-10-14 11:00 | 85 |  |  |  |  | 蔡峰 | 2h | 56 |
| 90 | 4.8 | uml概述PPT答辩 | milestone, manual | 0d | 2018-10-17 09:00 | 2018-10-17 09:00 |  |  |  |  |  |  |  |  |
| 91 | 4.9 | uml概述PPT修改 | manual | 0.5h | 2018-10-19 09:00 | 2018-10-19 09:30 | 86, 87, 88, 89 |  |  |  |  | 江亮儒 | 0.5h | 14 |
| 92 | 4.10 | uml工具的学习 | manual | 1h | 2018-10-21 09:00 | 2018-10-21 10:00 |  |  |  |  |  | 小组全体成员 | 1h |  |
| 93 | 4.11 | uml工具翻转PPT制作 | manual | 1h | 2018-10-21 09:00 | 2018-10-21 10:00 |  |  |  |  |  | 江亮儒 | 1.5h | 42 |
| 94 | 4.12 | uml工具翻转PPT答辩 | milestone, manual | 0d | 2018-10-24 09:00 | 2018-10-24 09:00 |  |  |  |  |  |  |  |  |
| 95 | 4.13 | uml建模基础学习 | manual | 1h | 2018-10-25 09:00 | 2018-10-25 10:00 |  |  |  |  |  | 小组全体成员 | 1h |  |
| 96 | 4.14 | 用例图、类图PPT制作 |  | 2h | 2018-10-25 10:00 | 2018-10-25 12:00 | 95 |  |  |  | 58.25d | 黄为波 | 2h | 56 |
| 97 | 4.15 | 通信图PPT制作 | manual | 1h | 2018-10-27 09:00 | 2018-10-27 10:00 | 95 |  |  |  |  | 陈子卿 | 1h | 28 |
| 98 | 4.16 | 部署图PPT制作 | manual | 1h | 2018-10-28 09:00 | 2018-10-28 10:00 | 95 |  |  |  |  | 江亮儒 | 1h | 28 |
| 99 | 4.17 | 状态机图PPT制作 | manual | 1h | 2018-10-28 09:00 | 2018-10-28 10:00 | 95 |  |  |  |  | 苏雨豪 | 1h | 28 |
| 100 | 4.18 | 顺序图PPT制作 | manual | 1h | 2018-10-27 09:00 | 2018-10-27 10:00 | 95 |  |  |  |  | 蔡峰 | 1h | 28 |
| 101 | 4.19 | uml图PPT答辩 | milestone, manual | 0d | 2018-10-31 09:00 | 2018-10-31 09:00 |  |  |  |  |  |  |  |  |

| ID | WBS | Task | Type | Duration | Start | Finish | Total slack | Resources | Work |
| --- | --- | --- | --- | --- | --- | --- | --- | --- | --- |
| 102 | 5 | **会议** |  | 35.75d | 2018-09-21 09:00 | 2018-10-28 10:00 | 0d |  | 6h |
| 103 | 5.1 | 第1次会议（明确贯穿项目的职责） | manual | 1h | 2018-09-21 09:00 | 2018-09-21 10:00 |  | 小组全体成员 | 1h |
| 104 | 5.2 | 第2次会议(任务的安排与约定) | manual | 1h | 2018-09-28 09:00 | 2018-09-28 10:00 |  | 小组全体成员 | 1h |
| 105 | 5.3 | 第3次会议(任务的安排与约定) | manual | 1h | 2018-10-12 09:00 | 2018-10-12 10:00 |  | 小组全体成员 | 1h |
| 106 | 5.4 | 第4次会议(任务的安排与约定) | manual | 1h | 2018-10-19 09:00 | 2018-10-19 10:00 |  | 小组全体成员 | 1h |
| 107 | 5.5 | 第5次会议(阶段性检查与审核) | manual | 1h | 2018-10-20 09:00 | 2018-10-20 10:00 |  | 小组全体成员 | 1h |
| 108 | 5.6 | 第6次会议(阶段性检查与审核) | manual | 1h | 2018-10-28 09:00 | 2018-10-28 10:00 |  | 小组全体成员 | 1h |
| 110 | 5.7 | <新任务> | manual | 1d? | 2018-09-21 09:00 | 2018-09-22 09:00 |  |  |  |
