Schedule from MS Project, 2018-09-19 to 2019-01-20, costs in ¥, A marks actual dates.
Microsoft

## Calendars

- 标准: Mon-Fri 08:00-12:00, 13:00-17:00; Sat-Sun 08:00-21:00. Exceptions (off unless hours are given): 2018-10-01 to 2018-10-07 (国庆假期).

## Resources

| Resource | Rate |
| --- | --- |
| 蔡峰 | 28 |
| 黄为波 | 28 |
| 江亮儒 | 28 |
| 苏雨豪 | 28 |
| 陈子卿 | 28 |
| 小组全体成员 |  |

## Schedule

| ID | WBS | Task | Type | Duration | Start | Finish | Predecessors | Complete | Remaining | Baseline start | Baseline finish | Baseline duration | Constraint | Resources | Work | Actual work | Cost | Actual cost |
| --- | --- | --- | --- | --- | --- | --- | --- | --- | --- | --- | --- | --- | --- | --- | --- | --- | --- | --- |
| 1 | 1 | **需求工程项目准备** |  | 55.25d | 2018-09-19 09:00 A | 2018-11-11 18:00 |  | 96% | 2.05d | 2018-09-19 09:00 | 2018-11-08 18:00 | 59.75d |  |  | 63.5h | 58.5h | 1,190 | 1,050 |
| 2 | 1.1 | 确定分组成员 | manual | 1h | 2018-09-19 09:00 A | 2018-09-19 10:00 A |  | 100% |  | 2018-09-19 09:00 | 2018-09-19 10:00 | 1h |  | 小组全体成员 | 1h | 1h |  |  |
| 3 | 1.2 | 课题选定 | manual | 2d | 2018-09-19 10:00 A | 2018-09-21 10:00 A | 2 | 100% |  | 2018-09-19 09:00 | 2018-09-20 18:00 | 2d |  | 小组全体成员 | 2h | 2h |  |  |
| 4 | 1.3 | 统一开发工具 |  | 1d | 2018-09-19 10:00 A | 2018-09-20 10:00 A | 2 | 100% |  | 2018-09-19 09:00 | 2018-09-20 09:00 | 1d |  | 小组全体成员 | 8h | 8h |  |  |
| 5 | 1.4 | 确定小组成员职责 | manual | 1d | 2018-09-19 10:00 A | 2018-09-20 10:00 A | 2 | 100% |  | 2018-09-26 09:00 | 2018-09-27 09:00 | 1d |  | 小组全体成员 | 8h | 8h |  |  |
| 6 | 1.5 | **需求工程项目计划** |  | 47d | 2018-09-26 09:00 A | 2018-11-11 18:00 |  | 94% | 2.96d | 2018-09-26 09:00 | 2018-11-07 18:00 | 50.5d |  |  | 44.5h | 39.5h | 1,190 | 1,050 |
| 7 | 1.5.1 | 采用需求工程项目计划模板 | manual | 0.1h | 2018-09-28 09:00 A | 2018-09-28 09:06 A |  | 100% |  |  |  |  |  | 黄为波 | 0.1h | 0.1h | 2.8 | 2.8 |
| 8 | 1.5.2 | 人力资源管理计划 | manual | 3h | 2018-09-29 09:00 A | 2018-09-29 12:00 A | 7 | 100% |  | 2018-09-28 09:00 | 2018-09-28 12:00 | 3h |  | 蔡峰 | 3h | 3h | 84 | 84 |
| 9 | 1.5.3 | 成本管理计划 | manual | 2h | 2018-09-29 09:00 A | 2018-09-29 11:00 A | 7 | 100% |  | 2018-09-28 09:00 | 2018-09-28 12:00 | 3h |  | 陈子卿 | 2h | 2h | 56 | 56 |
| 10 | 1.5.4 | 沟通管理计划 | manual | 3h | 2018-09-29 09:00 A | 2018-09-29 12:00 A | 7 | 100% |  | 2018-09-28 09:00 | 2018-09-28 12:00 | 3h |  | 苏雨豪 | 3h | 3h | 84 | 84 |
| 11 | 1.5.5 | 风险管理计划 | manual | 3h | 2018-09-29 09:00 A | 2018-09-29 12:00 A | 7 | 100% |  | 2018-09-28 09:00 | 2018-09-28 12:00 | 3h |  | 陈子卿 | 3h | 3h | 84 | 84 |
| 12 | 1.5.6 | 需求工程项目计划甘特图与wbs | manual | 2h | 2018-09-29 09:00 A | 2018-09-29 11:00 A |  | 100% |  |  |  |  |  | 黄为波 | 2h | 2h | 56 | 56 |
| 14 | 1.5.7 | 可行性分析报告起草 |  | 3h | 2018-09-30 15:00 A | 2018-09-30 18:00 A |  | 100% |  | 2018-09-27 09:00 | 2018-09-27 15:00 | 5h | finish no earlier than 2018-09-30 18:00 | 江亮儒 | 3h | 3h | 84 | 84 |
| 15 | 1.5.8 | 整合并检查需求工程项目计划 | manual | 1h | 2018-09-30 09:00 A | 2018-09-30 10:00 A | 7, 8, 9, 10, 11 | 100% |  |  |  |  |  | 黄为波 | 0.3h | 0.3h | 8.4 | 8.4 |
| 16 | 1.5.9 | 需求工程项目计划PPT起草 | manual | 2h | 2018-09-30 09:00 A | 2018-09-30 11:00 A | 7, 8, 9, 10, 11 | 100% |  |  |  |  |  | 苏雨豪 | 2h | 2h | 56 | 56 |
| 17 | 1.5.10 | 需求计划的项目概述错误信息修改 | manual | 1h | 2018-10-13 09:00 A | 2018-10-13 10:00 A | 15 | 100% |  |  |  |  |  | 黄为波 | 1h | 1h | 28 | 28 |
| 18 | 1.5.11 | 增加并细化了技术可行性分析的有关内容 | manual | 1h | 2018-10-13 09:00 A | 2018-10-13 10:00 A | 14 | 100% |  |  |  |  |  | 黄为波 | 1h | 1h | 28 | 28 |
| 19 | 1.5.12 | 修改人力资源管理部分 | manual | 1h | 2018-10-14 09:00 A | 2018-10-14 10:00 A | 15, 8 | 100% |  |  |  |  |  | 蔡峰 | 1h | 1h | 28 | 28 |
| 20 | 1.5.13 | 修改wbs项目收尾部分 | manual | 0.5h | 2018-10-18 09:00 A | 2018-10-18 09:30 A | 12 | 100% |  |  |  |  |  | 黄为波 | 0.5h | 0.5h | 14 | 14 |
| 21 | 1.5.14 | 项目章程的编写 | manual | 1h | 2018-10-20 09:00 A | 2018-10-20 10:00 A |  | 100% |  |  |  |  |  | 苏雨豪 | 1h | 1h | 28 | 28 |
| 22 | 1.5.15 | 需求工程项目计划修改(更新培训日期，删除了不必要的内容) | manual | 1.5h | 2018-10-20 09:00 A | 2018-10-20 10:30 A | 17 | 100% |  |  |  |  |  | 蔡峰; 陈子卿 | 2h | 2h | 56 | 56 |
| 23 | 1.5.16 | 修改需求工程项目计划目录 | manual | 0.1h | 2018-10-21 09:00 A | 2018-10-21 09:06 A | 22 | 100% |  |  |  |  |  | 陈子卿 | 0.1h | 0.1h | 2.8 | 2.8 |
| 24 | 1.5.17 | 质量保证计划编写 | manual | 2h | 2018-10-27 09:00 A | 2018-10-27 11:00 A | 22 | 100% |  |  |  |  |  | 江亮儒; 苏雨豪 | 4h | 4h | 112 | 112 |
| 25 | 1.5.18 | 在需求工程项目计划增加范围、时间、质量管理计划 | manual | 2h | 2018-10-27 09:00 A | 2018-10-27 11:00 A | 23 | 100% |  |  |  |  |  | 黄为波 | 2h | 2h | 56 | 56 |
| 26 | 1.5.19 | 根据预评审对“人员配置管理计划”以及“干系人手册”进行修改 | manual | 1h | 2018-10-27 09:00 A | 2018-10-27 10:00 A | 25 | 100% |  |  |  |  |  | 蔡峰 | 1h | 1h | 28 | 28 |
| 27 | 1.5.20 | 风险管理计划修改，新增采购计划 | manual | 1h | 2018-10-27 09:00 A | 2018-10-27 10:00 A | 26 | 100% |  |  |  |  |  | 陈子卿 | 1h | 1h | 28 | 28 |
| 28 | 1.5.21 | 修改需求工程项目计划答辩PPT | manual | 1h | 2018-10-28 09:00 A | 2018-10-28 10:00 A | 27 | 100% |  |  |  |  |  | 蔡峰; 陈子卿 | 2h | 2h | 56 | 56 |
| 29 | 1.5.22 | 小组组内模拟评审，修改了相关文档错误内容 | manual | 1h | 2018-10-30 09:00 A | 2018-10-30 10:00 A | 28 | 100% |  |  |  |  |  | 小组全体成员 | 1h | 1h |  |  |
| 30 | 1.5.23 | 需求工程项目计划评审 | milestone, manual | 0d | 2018-10-31 09:00 A | 2018-10-31 09:00 A | 29 | 100% |  |  |  |  |  |  |  |  |  |  |
| 31 | 1.5.24 | 修改风险管理计划以及预算 | manual | 0.5h | 2018-11-01 09:00 A | 2018-11-01 09:30 A | 30 | 100% |  |  |  |  |  | 陈子卿 | 0.5h | 0.5h | 14 | 14 |
| 32 | 1.5.25 | 修改项目章程的批准 | manual | 0.5h | 2018-11-04 09:00 A | 2018-11-04 09:30 A | 30 | 100% |  |  |  |  |  | 苏雨豪 | 0.5h | 0.5h | 14 | 14 |
| 33 | 1.5.26 | 修改干系人手册与沟通管理计划 | manual | 0.5h | 2018-11-01 09:00 A | 2018-11-01 09:30 A | 30 | 100% |  |  |  |  |  | 蔡峰 | 0.5h | 0.5h | 14 | 14 |
| 34 | 1.5.27 | 修改可行性分析报告增加SWOT分析 | manual | 0.5h | 2018-11-04 09:00 A | 2018-11-04 09:30 A | 30 | 100% |  |  |  |  |  | 江亮儒 | 0.5h | 0.5h | 14 | 14 |
| 35 | 1.5.28 | 根据评审修改wbs | manual | 0.5h | 2018-11-11 09:00 A | 2018-11-11 09:30 A |  | 100% |  |  |  |  |  | 黄为波 | 0.5h | 0.5h | 14 | 14 |
| 36 | 1.5.29 | 小组个人对系统进行了解与构想 | manual | 1h | 2018-11-11 09:00 A | 2018-11-11 10:00 A |  | 100% |  |  |  |  |  | 小组全体成员 | 1h | 1h |  |  |
| 37 | 1.5.30 | 更新wbs输入输出表 | manual | 2h | 2018-09-26 09:00 | 2018-09-26 11:00 |  |  |  |  |  |  |  | 黄为波; 江亮儒 | 4h |  | 112 |  |
| 38 | 1.5.31 | 在计划中添加teambuilding相关信息 | manual | 0.5h | 2018-09-26 09:00 | 2018-09-26 09:30 |  |  |  |  |  |  |  | 蔡峰 | 0.5h |  | 14 |  |
| 39 | 1.5.32 | 更新干系人手册 | manual | 0.5h | 2018-09-26 09:00 | 2018-09-26 09:30 |  |  |  |  |  |  |  | 蔡峰 | 0.5h |  | 14 |  |

| ID | WBS | Task | Type | Duration | Start | Finish | Predecessors | Complete | Remaining | Actual start | Baseline start | Baseline finish | Baseline duration | Total slack | Resources | Work | Actual work | Cost | Actual cost |
| --- | --- | --- | --- | --- | --- | --- | --- | --- | --- | --- | --- | --- | --- | --- | --- | --- | --- | --- | --- |
| 40 | 2 | **需求开发阶段** |  | 57.75d | 2018-11-01 09:00 | 2018-12-19 18:00 |  | 7% | 53.82d | 2018-11-15 09:00 | 2018-11-01 09:00 | 2018-12-08 18:00 | 44.38d |  |  | 218.4h | 28h | 4,379.2 | 728 |
| 41 | 2.1 | **需求获取** |  | 58.88d | 2018-11-15 09:00 A | 2019-01-04 10:00 |  | 40% | 35.44d |  | 2018-11-05 09:00 | 2018-11-14 15:00 | 10.88d | 0d |  | 47.4h | 28h | 1,131.2 | 728 |
| 42 | 2.1.1 | 用户群分类 | manual | 1h | 2018-11-15 09:00 A | 2018-11-15 10:00 A | 6, 30 | 100% |  |  | 2018-11-08 09:00 | 2018-11-08 11:00 | 2h |  | 蔡峰 | 1h | 1h | 28 | 28 |
| 43 | 2.1.2 | 团队建设 | manual | 2h | 2018-11-20 09:00 | 2018-11-20 11:00 |  |  |  |  |  |  |  |  | 小组全体成员 | 2h |  |  |  |
| 44 | 2.1.3 | 定义愿景和范围并编写文档 | manual | 1h | 2018-11-24 09:00 A | 2018-11-24 10:00 A | 6, 30 | 100% |  |  | 2018-11-08 09:00 | 2018-11-08 12:00 | 3h |  | 小组全体成员 | 1h | 1h |  |  |
| 45 | 2.1.4 | 学生代表访谈 | manual | 1h | 2018-11-15 09:00 A | 2018-11-15 10:00 A |  | 100% |  |  |  |  |  |  | 黄为波 | 1h | 1h | 28 | 28 |
| 46 | 2.1.5 | 修改愿景与范围文档 | manual | 1h | 2018-11-30 09:00 A | 2018-11-30 10:00 A |  | 100% |  |  |  |  |  |  | 陈子卿; 江亮儒; 黄为波; 蔡峰; 苏雨豪 | 5h | 5h | 140 | 140 |
| 47 | 2.1.6 | 与项目下达者确定愿景与范围 | manual | 1h | 2018-12-01 09:00 A | 2018-12-01 10:00 A | 44 | 100% |  |  |  |  |  |  | 小组全体成员 | 1h | 1h |  |  |
| 48 | 2.1.7 | 修改愿景与范围文档 | manual | 1h | 2018-12-02 09:00 A | 2018-12-02 10:00 A | 47 | 100% |  |  |  |  |  |  | 江亮儒; 苏雨豪 | 2h | 2h | 56 | 56 |
| 49 | 2.1.8 | 制作并发送教师邀请函与游客邀请函与学生代表邀请函 | manual | 1h | 2018-12-01 09:00 A | 2018-12-01 10:00 A |  | 100% |  |  |  |  |  |  | 蔡峰 | 1h | 1h | 28 | 28 |
| 50 | 2.1.9 | 教师代表访谈 | manual | 1h | 2018-12-02 10:00 A | 2018-12-02 11:00 A | 48 | 100% |  |  |  |  |  |  |  |  |  |  |  |
| 51 | 2.1.10 | 制作app界面原型初步 | manual | 8h | 2018-12-09 09:00 A | 2018-12-09 17:00 A | 45, 50 | 100% |  |  |  |  |  |  | 黄为波; 江亮儒 | 16h | 16h | 448 | 448 |
| 52 | 2.1.11 | 制作web界面原型初步 | manual | 14h | 2018-12-15 09:00 | 2018-12-16 10:00 |  |  |  |  |  |  |  |  | 陈子卿 | 14h |  | 392 |  |
| 53 | 2.1.12 | 修改愿景与范围文档版本范围 | manual | 1h | 2018-11-15 09:00 | 2018-11-15 10:00 |  |  |  |  |  |  |  |  |  |  |  |  |  |
| 54 | 2.1.13 | 修改愿景与范围文档上下文图部分 | manual | 1h | 2018-11-15 09:00 | 2018-11-15 10:00 |  |  |  |  |  |  |  |  |  |  |  |  |  |
| 55 | 2.1.14 | 补充愿景文档干系人，项目优先级，客户概貌 | manual | 1h | 2018-11-15 09:00 | 2018-11-15 10:00 |  |  |  |  |  |  |  |  |  |  |  |  |  |
| 56 | 2.1.15 | 教师代表的访谈 | manual | 1h | 2018-11-15 09:00 | 2018-11-15 10:00 |  |  |  |  |  |  |  |  |  |  |  |  |  |
| 57 | 2.1.16 | 游客代表的访谈 | manual | 0.5h | 2018-11-15 09:00 | 2018-11-15 09:30 |  |  |  |  |  |  |  |  |  |  |  |  |  |
| 58 | 2.1.17 | 教师代表的访谈 | manual | 1h | 2018-12-23 09:00 | 2018-12-23 10:00 |  |  |  |  |  |  |  |  | 小组全体成员 | 1h |  |  |  |
| 59 | 2.1.18 | 学生代表的访谈 | manual | 0.5h | 2018-11-15 09:00 | 2018-11-15 09:30 |  |  |  |  |  |  |  |  |  |  |  |  |  |
| 60 | 2.1.19 | 管理员代表的访谈 | manual | 0.5h | 2018-12-21 09:00 | 2018-12-21 09:30 |  |  |  |  |  |  |  |  | 小组全体成员 | 0.5h |  |  |  |
| 61 | 2.1.20 | 教师代表的访谈 | manual | 1h | 2019-01-04 09:00 | 2019-01-04 10:00 |  |  |  |  |  |  |  |  | 小组全体成员 | 1h |  |  |  |
| 62 | 2.1.21 | 1.4教师代表第二次访谈 | manual | 0.2h | 2019-01-04 09:00 | 2019-01-04 09:12 |  |  |  |  |  |  |  |  | 黄为波; 蔡峰 | 0.4h |  | 11.2 |  |
| 63 | 2.1.22 | 管理员代表的访谈 | manual | 0.5h | 2018-12-28 09:00 | 2018-12-28 09:30 |  |  |  |  |  |  |  |  | 小组全体成员 | 0.5h |  |  |  |

| ID | WBS | Task | Type | Duration | Start | Finish | Predecessors | Baseline start | Baseline finish | Baseline duration | Total slack | Resources | Work | Cost |
| --- | --- | --- | --- | --- | --- | --- | --- | --- | --- | --- | --- | --- | --- | --- |
| 64 | 2.2 | **需求分析** |  | 35.88d | 2018-12-09 09:00 | 2019-01-08 11:00 |  | 2018-11-15 09:00 | 2018-11-21 10:30 | 7.44d | 0d |  | 151h | 2,744 |
| 65 | 2.2.1 | 创建开发原型 | manual | 1h | 2018-12-09 09:00 | 2018-12-09 10:00 | 42, 44 | 2018-11-15 09:00 | 2018-11-15 12:00 | 3h |  | 江亮儒; 苏雨豪 | 2h | 56 |
| 66 | 2.2.2 | 分析获取需求的可行性 | manual | 1h | 2018-12-10 09:00 | 2018-12-10 10:00 |  | 2018-11-16 09:00 | 2018-11-16 12:00 | 3h |  | 陈子卿; 黄为波 | 2h | 56 |
| 67 | 2.2.3 | 确定需求的优先级 | manual | 1h | 2018-12-11 09:00 | 2018-12-11 10:00 | 66 | 2018-11-16 09:00 | 2018-11-16 11:00 | 2h |  | 蔡峰 | 1h | 28 |
| 68 | 2.2.4 | 编写e-r图，数据库设计 | manual | 2h | 2018-12-23 09:00 | 2018-12-23 11:00 |  |  |  |  |  | 黄为波 | 2h | 56 |
| 69 | 2.2.5 | 编写数据字典 | manual | 2h | 2018-12-23 09:00 | 2018-12-23 11:00 |  |  |  |  |  | 黄为波 | 2h | 56 |
| 70 | 2.2.6 | 编写游客用例图 | manual | 1d | 2018-12-23 09:00 | 2018-12-23 17:00 |  |  |  |  |  | 黄为波 | 8h | 224 |
| 71 | 2.2.7 | 编写游客对话框图 | manual | 2h | 2018-12-23 09:00 | 2018-12-23 11:00 |  |  |  |  |  | 黄为波 | 2h | 56 |
| 72 | 2.2.8 | 编写游客测试用例 | manual | 2h | 2018-12-23 09:00 | 2018-12-23 11:00 |  |  |  |  |  | 黄为波 | 2h | 56 |
| 73 | 2.2.9 | 编写教师，学生用例图 | manual | 4h | 2018-12-23 09:00 | 2018-12-23 13:00 |  |  |  |  |  | 江亮儒 | 4h | 112 |
| 74 | 2.2.10 | 编写教师，学生顺序图 | manual | 4h | 2018-12-24 09:00 | 2018-12-24 14:00 |  |  |  |  |  | 江亮儒 | 4h | 112 |
| 75 | 2.2.11 | 编写教师，学生对话框图 | manual | 4h | 2018-12-24 09:00 | 2018-12-24 14:00 |  |  |  |  |  | 江亮儒 | 4h | 112 |
| 76 | 2.2.12 | 编写管理员顺序图 | manual | 4h | 2018-12-24 09:00 | 2018-12-24 14:00 |  |  |  |  |  | 蔡峰 | 4h | 112 |
| 77 | 2.2.13 | 编写管理员对话框图 | manual | 4h | 2018-12-24 09:00 | 2018-12-24 14:00 |  |  |  |  |  | 蔡峰 | 4h | 112 |
| 78 | 2.2.14 | 制作用户手册 | manual | 2h | 2018-12-23 09:00 | 2018-12-23 11:00 |  |  |  |  |  | 陈子卿 | 2h | 56 |
| 79 | 2.2.15 | 更新界面原型 | manual | 4h | 2018-12-23 09:00 | 2018-12-23 13:00 |  |  |  |  |  | 陈子卿 | 4h | 112 |
| 80 | 2.2.16 | 制作管理员界面原型 | manual | 1d? | 2018-12-24 09:00 | 2018-12-25 09:00 |  |  |  |  |  |  |  |  |
| 81 | 2.2.17 | 界面原型的修改 | manual | 12h | 2018-12-29 09:00 | 2018-12-29 21:00 |  |  |  |  |  | 陈子卿; 黄为波 | 24h | 672 |
| 82 | 2.2.18 | 添加新版测试用例 | manual | 4h | 2019-01-01 09:00 | 2019-01-01 14:00 |  |  |  |  |  | 黄为波 | 4h | 112 |
| 83 | 2.2.19 | 修改web界面原型 | manual | 8h | 2019-01-04 09:00 | 2019-01-05 09:00 |  |  |  |  |  | 黄为波 | 8h | 224 |
| 84 | 2.2.20 | 修改app界面原型 | manual | 6h | 2019-01-06 09:00 | 2019-01-06 15:00 |  |  |  |  |  | 黄为波; 江亮儒 | 12h | 336 |
| 85 | 2.2.21 | <新任务> | manual | 1d? | 2018-12-09 09:00 | 2018-12-09 17:00 |  |  |  |  |  |  |  |  |
| 86 | 2.2.22 | 需求建模 | manual | 1h | 2018-12-11 09:00 | 2018-12-11 10:00 | 66, 67 | 2018-11-16 09:00 | 2018-11-16 12:00 | 3h |  | 苏雨豪 | 1h | 28 |
| 87 | 2.2.23 | 编写数据字典 | manual | 53h | 2018-12-09 09:00 | 2018-12-14 18:00 | 65, 66, 67, 86 | 2018-11-19 09:00 | 2018-11-20 11:00 | 10h |  | 小组全体成员 | 53h |  |
| 88 | 2.2.24 | 编写项目优先级打分表 | manual | 2h | 2019-01-08 09:00 | 2019-01-08 11:00 |  |  |  |  |  | 江亮儒 | 2h | 56 |
| 89 | 2.2.25 | <新任务> | manual | 1d? | 2018-12-09 09:00 | 2018-12-09 17:00 |  |  |  |  |  |  |  |  |

| ID | WBS | Task | Type | Duration | Start | Finish | Predecessors | Baseline start | Baseline finish | Baseline duration | Resources | Work | Cost |
| --- | --- | --- | --- | --- | --- | --- | --- | --- | --- | --- | --- | --- | --- |
| 90 | 2.3 | **需求规范规格** |  | 25.75d | 2018-11-21 09:00 | 2018-12-12 18:00 |  | 2018-11-21 09:00 | 2018-11-28 18:00 | 9.25d |  | 13h | 336 |
| 93 | 2.3.1 | 使用需求规格说明书的模版 | manual | 1h | 2018-12-07 09:00 | 2018-12-07 10:00 |  | 2018-11-22 09:00 | 2018-11-22 10:00 | 1h | 蔡峰 | 1h | 28 |
| 94 | 2.3.2 | 确认需求来源 | manual | 1h | 2018-12-08 09:00 | 2018-12-08 10:00 |  | 2018-11-22 09:00 | 2018-11-22 11:00 | 2h | 陈子卿 | 1h | 28 |
| 95 | 2.3.3 | 确定每个需求的唯一标识 | manual | 1h | 2018-12-09 09:00 | 2018-12-09 10:00 | 66, 67, 86 | 2018-11-23 09:00 | 2018-11-23 14:00 | 4h | 黄为波 | 1h | 28 |
| 96 | 2.3.4 | 记录非功能需求 | manual | 1h | 2018-12-10 09:00 | 2018-12-10 10:00 |  | 2018-11-23 09:00 | 2018-11-23 11:00 | 2h | 苏雨豪; 陈子卿 | 2h | 56 |
| 97 | 2.3.5 | 编写需求规格说明书 | manual | 1h | 2018-12-11 09:00 | 2018-12-11 10:00 | 93, 94, 95, 96 | 2018-11-26 09:00 | 2018-11-28 09:00 | 2d | 小组全体成员 | 1h |  |
| 98 | 2.3.6 | 根据最新界面更新用例图描述 | manual | 5h | 2019-01-08 09:00 | 2019-01-08 15:00 |  |  |  |  | 江亮儒 | 5h | 140 |
| 99 | 2.3.7 | 编写项目优先级打分表 | manual | 2h | 2019-01-08 09:00 | 2019-01-08 11:00 |  |  |  |  | 江亮儒 | 2h | 56 |
| 100 | 2.3.8 | <新任务> | manual | 1d? | 2018-11-21 09:00 | 2018-11-22 09:00 |  |  |  |  |  |  |  |
| 101 | 2.3.9 | 需求SRS评审 | milestone, manual | 0d | 2018-12-12 09:00 | 2018-12-12 09:00 | 97 |  |  |  |  |  |  |
| 102 | 2.4 | **需求规格审核** |  | 9.25d | 2018-12-12 09:00 | 2018-12-19 18:00 |  | 2018-11-28 09:00 | 2018-12-03 18:00 | 7.25d |  | 7h | 168 |
| 103 | 2.4.1 | jad会议 | manual | 1h | 2019-01-06 09:00 | 2019-01-06 10:00 |  |  |  |  | 小组全体成员 | 1h |  |
| 104 | 2.4.2 | 确定合格标准 | manual | 1h | 2018-12-13 09:00 | 2018-12-13 10:00 | 101 | 2018-11-29 09:00 | 2018-11-29 14:00 | 4h | 蔡峰; 苏雨豪 | 2h | 56 |
| 105 | 2.4.3 | 编写用户手册 | manual | 1h | 2018-12-14 09:00 | 2018-12-14 10:00 | 101 | 2018-11-30 09:00 | 2018-11-30 16:00 | 6h | 陈子卿 | 1h | 28 |
| 106 | 2.4.4 | 进行需求测试 | manual | 1h | 2018-12-14 09:00 | 2018-12-14 10:00 | 101 | 2018-12-03 09:00 | 2018-12-03 14:00 | 4h | 黄为波; 江亮儒; 苏雨豪 | 3h | 84 |
| 107 | 3 | **需求管理阶段** |  | 11.25d | 2019-01-06 09:00 | 2019-01-15 12:00 |  | 2018-12-05 09:00 | 2018-12-13 18:00 | 10.25d |  | 18h | 224 |
| 108 | 3.1 | 建立需求变更控制过程 | manual | 1h | 2019-01-07 09:00 | 2019-01-07 10:00 | 106 | 2018-12-05 09:00 | 2018-12-06 09:00 | 1d | 蔡峰 | 1h | 28 |
| 109 | 3.2 | 对需求变更影响分析 | manual | 1h | 2019-01-07 09:00 | 2019-01-07 10:00 | 108 | 2018-12-05 09:00 | 2018-12-06 09:00 | 1d | 黄为波 | 1h | 28 |
| 110 | 3.3 | 建立基线并控制需求集合版本 | manual | 1h | 2019-01-07 09:00 | 2019-01-07 10:00 | 109 | 2018-12-05 09:00 | 2018-12-06 09:00 | 1d | 江亮儒 | 1h | 28 |
| 111 | 3.4 | 重新编写测试用例 | manual | 1h | 2019-01-10 09:00 | 2019-01-10 10:00 |  | 2018-12-07 09:00 | 2018-12-08 09:00 | 1d | 江亮儒 | 1h | 28 |
| 112 | 3.5 | 建立CCB变更控制委员会 | manual | 1d | 2019-01-06 09:00 | 2019-01-06 17:00 |  |  |  |  | 小组全体成员 | 8h |  |
| 113 | 3.6 | 向CCB委员会主席确认变更需求申请 | manual | 1h | 2019-01-09 09:00 | 2019-01-09 10:00 |  |  |  |  | 小组全体成员 | 1h |  |
| 114 | 3.7 | 向CCB委员会开发者代表确定技术可行性 | manual | 1h | 2019-01-09 09:00 | 2019-01-09 10:00 |  |  |  |  | 小组全体成员 | 1h |  |
| 115 | 3.8 | 完善界面原型 | manual | 1h | 2019-01-09 09:00 | 2019-01-09 10:00 | 105 | 2018-12-10 09:00 | 2018-12-12 09:00 | 2d | 陈子卿; 黄为波 | 2h | 56 |
| 116 | 3.9 | 完善用户手册 | manual | 1h | 2019-01-09 09:00 | 2019-01-09 10:00 | 115 | 2018-12-10 09:00 | 2018-12-12 09:00 | 2d | 蔡峰; 江亮儒 | 2h | 56 |
| 117 | 3.10 | 验证变更评审 | milestone, manual | 0d | 2019-01-11 09:00 | 2019-01-11 09:00 | 111, 115, 116 | 2018-12-10 09:00 | 2018-12-12 09:00 | 2d | 苏雨豪 |  |  |

| ID | WBS | Task | Type | Duration | Start | Finish | Predecessors | Total slack | Free slack | Resources | Work | Cost |
| --- | --- | --- | --- | --- | --- | --- | --- | --- | --- | --- | --- | --- |
| 118 | 4 | **项目收尾** |  | 19.25d | 2019-01-05 09:00 | 2019-01-20 18:00 |  |  |  |  | 7h |  |
| 119 | 4.1 | 制作最终评审PPT | manual | 4h | 2019-01-05 09:00 | 2019-01-05 13:00 | 117 |  |  | 小组全体成员 | 4h |  |
| 120 | 4.2 | 小组成员个人总结 | manual | 1h | 2019-01-06 09:00 | 2019-01-06 10:00 | 117 |  |  | 小组全体成员 | 1h |  |
| 121 | 4.3 | 小组总体工作总结 | manual | 2h | 2019-01-12 09:00 | 2019-01-12 11:00 | 117 |  |  | 小组全体成员 | 2h |  |
| 122 | 4.4 | 最终评审PPT答辩 | milestone, manual | 0d | 2019-01-20 09:00 | 2019-01-20 09:00 | 119, 120, 121 |  |  | 小组全体成员 |  |  |
| 123 | 5 | **培训与翻转课堂** |  | 38.25d | 2018-09-28 09:00 | 2018-11-06 09:00 |  | 0d |  |  | 25h | 504 |
| 124 | 5.1 | 负责讲解project的使用 | manual | 2h | 2018-09-28 09:00 | 2018-09-28 11:00 |  |  |  | 小组全体成员; 黄为波 | 3h | 28 |
| 125 | 5.2 | 负责讲解word文档规范排版 | manual | 1h | 2018-09-29 09:00 | 2018-09-29 10:00 |  |  |  | 黄为波; 小组全体成员 | 2h | 28 |
| 126 | 5.3 | uml概述的学习以及PPT制作 | manual | 1h | 2018-10-13 09:00 | 2018-10-13 10:00 |  |  |  | 小组全体成员 | 1h |  |
| 127 | 5.4 | 1.7UML2.0新特性+目录 | manual | 2h | 2018-10-14 09:00 | 2018-10-14 11:00 | 126 |  |  | 苏雨豪 | 2h | 56 |
| 128 | 5.5 | 完成1.1-1.4UML的结构制作 | manual | 2h | 2018-10-14 09:00 | 2018-10-14 11:00 | 126 |  |  | 陈子卿 | 2h | 56 |
| 129 | 5.6 | UML图PPT的初步编写 | manual | 2h | 2018-10-14 09:00 | 2018-10-14 11:00 | 126 |  |  | 江亮儒 | 2h | 56 |
| 130 | 5.7 | 完成UML视图及系统开发阶段部分 | manual | 2h | 2018-10-14 09:00 | 2018-10-14 11:00 | 126 |  |  | 蔡峰 | 2h | 56 |
| 131 | 5.8 | uml概述PPT答辩 | milestone, manual | 0d | 2018-10-17 09:00 | 2018-10-17 09:00 |  |  |  |  |  |  |
| 132 | 5.9 | uml概述PPT修改 | manual | 0.5h | 2018-10-19 09:00 | 2018-10-19 09:30 | 127, 128, 129, 130 |  |  | 江亮儒 | 0.5h | 14 |
| 133 | 5.10 | uml工具的学习 | manual | 1h | 2018-10-21 09:00 | 2018-10-21 10:00 |  |  |  | 小组全体成员 | 1h |  |
| 134 | 5.11 | uml工具翻转PPT制作 | manual | 1h | 2018-10-21 09:00 | 2018-10-21 10:00 |  |  |  | 江亮儒 | 1.5h | 42 |
| 135 | 5.12 | uml工具翻转PPT答辩 | milestone, manual | 0d | 2018-10-24 09:00 | 2018-10-24 09:00 |  |  |  |  |  |  |
| 136 | 5.13 | uml建模基础学习 | manual | 1h | 2018-10-25 09:00 | 2018-10-25 10:00 |  |  |  | 小组全体成员 | 1h |  |
| 137 | 5.14 | 用例图、类图PPT制作 |  | 2h | 2018-10-25 10:00 | 2018-10-25 12:00 | 136 | 103.38d | 6.88d | 黄为波 | 2h | 56 |
| 138 | 5.15 | 通信图PPT制作 | manual | 1h | 2018-10-27 09:00 | 2018-10-27 10:00 | 136 |  |  | 陈子卿 | 1h | 28 |
| 139 | 5.16 | 部署图PPT制作 | manual | 1h | 2018-10-28 09:00 | 2018-10-28 10:00 | 136 |  |  | 江亮儒 | 1h | 28 |
| 140 | 5.17 | 状态机图PPT制作 | manual | 1h | 2018-10-28 09:00 | 2018-10-28 10:00 | 136 |  |  | 苏雨豪 | 1h | 28 |
| 141 | 5.18 | 顺序图PPT制作 | manual | 1h | 2018-10-27 09:00 | 2018-10-27 10:00 | 136 |  |  | 蔡峰 | 1h | 28 |
| 142 | 5.19 | uml图PPT答辩 | milestone, manual | 0d | 2018-10-31 09:00 | 2018-10-31 09:00 | 137, 138, 139, 140, 141 |  |  |  |  |  |
| 143 | 5.20 | uml界面原型学习 | manual | 1h | 2018-11-04 09:00 | 2018-11-04 10:00 |  |  |  | 小组全体成员 | 1h |  |
| 144 | 5.21 | uml界面原型翻转 | milestone, manual | 0d | 2018-11-06 09:00 | 2018-11-06 09:00 | 143 |  |  |  |  |  |

| ID | WBS | Task | Type | Duration | Start | Finish | Total slack | Resources | Work |
| --- | --- | --- | --- | --- | --- | --- | --- | --- | --- |
| 145 | 6 | **会议** |  | 85.25d | 2018-09-21 09:00 | 2018-12-09 10:00 | 0d |  | 9.5h |
| 146 | 6.1 | 第1次会议（明确贯穿项目的职责） | manual | 1h | 2018-09-21 09:00 | 2018-09-21 10:00 |  | 小组全体成员 | 1h |
| 147 | 6.2 | 第2次会议(任务的安排与约定) | manual | 1h | 2018-09-28 09:00 | 2018-09-28 10:00 |  | 小组全体成员 | 1h |
| 148 | 6.3 | 第3次会议(任务的安排与约定) | manual | 1h | 2018-10-12 09:00 | 2018-10-12 10:00 |  | 小组全体成员 | 1h |
| 149 | 6.4 | 第4次会议(任务的安排与约定) | manual | 1h | 2018-10-19 09:00 | 2018-10-19 10:00 |  | 小组全体成员 | 1h |
| 150 | 6.5 | 第5次会议(阶段性检查与审核) | manual | 1h | 2018-10-20 09:00 | 2018-10-20 10:00 |  | 小组全体成员 | 1h |
| 151 | 6.6 | 第6次会议(阶段性检查与审核) | manual | 1h | 2018-10-28 09:00 | 2018-10-28 10:00 |  | 小组全体成员 | 1h |
| 152 | 6.7 | 第7次会议(阶段性检查与审核) | manual | 1h | 2018-11-04 09:00 | 2018-11-04 10:00 |  | 小组全体成员 | 1h |
| 153 | 6.8 | 第8次会议(周任务安排) | manual | 0.5h | 2018-11-13 09:00 | 2018-11-13 09:30 |  | 小组全体成员 | 0.5h |
| 154 | 6.9 | 第9次会议 | manual | 1h | 2018-11-23 09:00 | 2018-11-23 10:00 |  | 小组全体成员 | 1h |
| 155 | 6.10 | 第10次会议 | manual | 1h | 2018-12-09 09:00 | 2018-12-09 10:00 |  | 小组全体成员 | 1h |
